How a schedule from MS Project changed from version to version. A marks actual dates.

## Version 1 (saved 2026-03-15)

Note of the change: Добавил шаблон графика работ

| ID | WBS | Task | Duration | Start | Finish | Predecessors |
| --- | --- | --- | --- | --- | --- | --- |
| 1 | 1 | **Проект** | 104d | 2026-03-11 | 2026-08-31 |  |
| 2 | 1.1 | **Концептуальный дизайн** | 16d | 2026-03-11 | 2026-04-01 |  |
| 3 |  | Анализ ТЗ | 1.2w | 2026-03-11 | 2026-03-18 |  |
| 4 |  | Выбор полетного задания | 1w | 2026-03-19 | 2026-03-25 | 3 |
| 5 |  | Выбор/обоснование аэродинамической схемы | 1w | 2026-03-19 | 2026-03-25 | 3 |
| 6 |  | Выбор бортового оборудования | 1w | 2026-03-26 | 2026-04-01 | 4 |
| 7 |  | Выбор ПО | 1w | 2026-03-26 | 2026-04-01 | 4 |
| 8 |  | Эскиз (3D модель) | 1w | 2026-03-26 | 2026-04-01 | 5 |
| 9 |  | Описание методологии проектирования | 2.2w | 2026-03-18 | 2026-04-01 |  |
| 10 |  | Сделать общее фото) | 0d | 2026-04-01 | 2026-04-01 |  |
| 11 | 1.2 | **Проектный дизайн** | 34d | 2026-03-25 | 2026-05-13 |  |
| 12 | 1.2.1 | **Аэродинамика** | 2w | 2026-03-26 | 2026-04-08 |  |
| 13 |  | Выбор аэрод-х профилей | 2w | 2026-03-26 | 2026-04-08 | 5 |
| 14 |  | Геометрические хара-ки | 2w | 2026-03-26 | 2026-04-08 | 5 |
| 15 |  | Аэродина-е коэфф. | 2w | 2026-03-26 | 2026-04-08 | 5 |
| 16 |  | Динамическая и статическая устойчивости | 2w | 2026-03-26 | 2026-04-08 | 5 |
| 17 | 1.2.2 | **Силовая установка** | 2.5w | 2026-04-09 | 2026-04-25 | 12 |
| 18 |  | Расчет энергопотребления | 2d | 2026-04-09 | 2026-04-10 | 4 |
| 19 |  | Выбор мотора и винта | 7d | 2026-04-13 | 2026-04-21 | 18 |
| 20 |  | Оценка потребной и располагаемой тяг | 3d | 2026-04-22 | 2026-04-24 | 19, 12 |
| 21 | 1.2.3 | **Бортовое оборудование** | 3w | 2026-04-01 | 2026-04-21 |  |
| 22 |  | Сруктурно-функциональная и схема подключения | 5d | 2026-04-02 | 2026-04-08 | 6 |
| 23 |  | LUA scripts. Получение навигационных параметров | 3d | 2026-04-09 | 2026-04-13 | 22 |
| 24 |  | LUA scripts. Обработка данных по UART | 3d | 2026-04-14 | 2026-04-16 | 6, 23 |
| 25 |  | Расчет энергопотребления | 3d | 2026-04-17 | 2026-04-21 | 22 |
| 26 | 1.2.4 | **Технология производства** | 23d | 2026-04-01 | 2026-05-04 |  |
| 27 |  | Выбор материалов конструкции | 5d | 2026-04-01 | 2026-04-07 | 4, 5 |
| 28 |  | Определить набор типовых элементов | 7d | 2026-04-08 | 2026-04-16 | 27 |
| 29 |  | Подготовить композитную матрицу | 7d | 2026-04-23 | 2026-05-04 | 28, 12, 39 |
| 30 | 1.2.5 | **Прочностные расчеты** | 12d | 2026-04-25 | 2026-05-13 |  |
| 31 |  | Оценка эксплуатационных и предельных перегрузок | 3d | 2026-04-22 | 2026-04-24 | 4, 19 |
| 32 |  | V-n диаграмма | 6d | 2026-04-29 | 2026-05-07 | 31 |
| 33 |  | Центровочная ведомость | 6d | 2026-05-05 | 2026-05-13 | 17, 26 |
| 34 | 1.2.6 | **Компьютерное зрение** | 3w | 2026-03-25 | 2026-04-14 |  |
| 35 |  | Прием и обработка данных по UART | 3d | 2026-03-25 | 2026-03-27 |  |
| 36 |  | Работа с записью данных в flash | 3d | 2026-03-30 | 2026-04-01 | 35 |
| 37 |  | Создать базу сжатых изображений символов | 3d | 2026-04-02 | 2026-04-06 | 36 |
| 38 |  | Корреляционный анализ | 6d | 2026-04-07 | 2026-04-14 | 37 |
| 39 |  | Детализированная 3D модель | 21d | 2026-03-25 | 2026-04-22 |  |
| 40 | 1.3 | **Производство** | 23d | 2026-05-15 | 2026-07-10 |  |
| 41 |  | Изготовление фюзеляжа | 3w | 2026-05-15 | 2026-06-30 | 12, 26 |
| 42 |  | Резка крыла | 2w | 2026-05-15 | 2026-06-23 | 12, 26 |
| 43 |  | Изготовление хвостового оперения | 2w | 2026-05-15 | 2026-06-23 | 12, 26 |
| 44 |  | Макетирования работы бортового оборудования | 2w | 2026-05-15 | 2026-06-23 | 21 |
| 45 |  | Проектирование транспортировочной коробки | 1w | 2026-07-01 | 2026-07-07 | 39, 41, 42 |
| 46 |  | Натурные испытания на прочность элементов конструкции | 15d | 2026-06-15 | 2026-07-03 | 29, 31 |
| 47 |  | Испытания | 0d | 2026-07-15 | 2026-07-15 |  |

## Version 2 (saved 2026-03-16)

Note of the change: Изменил длительность и очередность задач КЗ

Last finish stays 2026-08-31.

Added:

| ID | Task | Duration | Start | Finish | Predecessors |
| --- | --- | --- | --- | --- | --- |
| 23 | Исследовать возможности автопилота | 3w | 2026-04-02 | 2026-04-22 | 6 |

Changed:

| ID | Task | Start | Finish | Duration | Predecessors | Other |
| --- | --- | --- | --- | --- | --- | --- |
| 21 | **Бортовое оборудование** | 2026-04-01 → 2026-04-02 (+1d) | 2026-04-21 → 2026-04-22 (+1d) | 3w → 15d |  |  |
| 35 | **Компьютерное зрение** |  | 2026-04-14 → 2026-04-28 (+14d) | 3w → 5w |  |  |
| 36 | Создать базу сжатых изображений символов | 2026-04-02 → 2026-03-25 (-8d) | 2026-04-06 → 2026-03-31 (-6d) | 3d → 5d | 37 → none |  |
| 37 | Работа с записью данных на SD |  | 2026-04-01 → 2026-04-03 (+2d) | 3d → 5d | 39 → none | was named Работа с записью данных в flash |
| 38 | Алгоритмы анализа и обработки изображений | 2026-04-07 → 2026-03-25 (-13d) |  | 6d → 3w | 36 → none | was named Корреляционный анализ |
| 39 | Прием и обработка данных по UART | 2026-03-25 → 2026-04-15 (+21d) | 2026-03-27 → 2026-04-21 (+25d) | 3d → 5d |  |  |
| 42 | Изготовление фюзеляжа |  |  |  | 12, 27 → 12, 27, 40 |  |
| 43 | Резка крыла | 2026-05-15 → 2026-05-05 (-10d) | 2026-06-23 → 2026-05-19 (-35d) |  |  |  |
| 45 | Макетирования работы бортового оборудования | 2026-05-15 → 2026-04-22 (-23d) | 2026-06-23 → 2026-05-06 (-48d) |  | 21 → 21, 35 |  |
